# Overall Implementation V1.0 Phase 1

Schedule from MS Project, 2004-08-25 to 2004-11-18.
BAX Global Pte Ltd

## Calendars

- Standard: Mon-Fri 08:00-12:00, 13:00-17:00; Sat-Sun off.

## Schedule

| ID | WBS | Task | Duration | Start | Finish | Predecessors | Total slack | Free slack |
| --- | --- | --- | --- | --- | --- | --- | --- | --- |
| 1 | 1 | **Australia Implementation Timeline** | 62d? | 2004-08-25 | 2004-11-18 |  | 0d |  |
| 2 | 1.1 | Workshop | 2d | 2004-08-25 | 2004-08-26 |  | 0d |  |
| 3 | 1.2 | Infocus Internal Sync | 4d | 2004-08-27 | 2004-09-01 | 2 | 0d |  |
| 4 | 1.3 | Business Narrative | 4d | 2004-09-02 | 2004-09-07 | 3 | 0d |  |
| 5 | 1.4 | **Business Setup** | 24d | 2004-08-27 | 2004-09-29 |  | 14d |  |
| 6 | 1.4.1 | **GST Agency Agreement** | 24d | 2004-08-27 | 2004-09-29 | 2 | 14d |  |
| 7 | 1.4.1.1 | Info from Infocus | 4d | 2004-08-27 | 2004-09-01 |  | 19d | 0d |
| 8 | 1.4.1.2 | Processing & Approval | 4w | 2004-09-02 | 2004-09-29 | 7 | 19d |  |
| 9 | 1.4.2 | Tax Code Set up | 14d | 2004-08-27 | 2004-09-15 | 2 | 29d |  |
| 10 | 1.5 | **Commercial Agreements** | 19d | 2004-08-25 | 2004-09-20 |  | 5d |  |
| 11 | 1.5.1 | Infocus - Citibank | 15d | 2004-08-25 | 2004-09-14 |  | 52d |  |
| 12 | 1.5.2 | Infocus - Escalate | 5d | 2004-08-25 | 2004-08-31 |  | 5d | 0d |
| 13 | 1.5.3 | **Infocus - BAX** | 17d | 2004-08-27 | 2004-09-20 |  | 5d |  |
| 14 | 1.5.3.1 | **IOA Draft** | 3d | 2004-08-27 | 2004-08-31 | 2 | 5d | 0d |
| 15 | 1.5.3.1.1 | Warehousing | 3d | 2004-08-27 | 2004-08-31 |  | 5d |  |
| 16 | 1.5.3.1.2 | Transportation | 3d | 2004-08-27 | 2004-08-31 |  | 5d |  |
| 17 | 1.5.3.1.3 | Customs Clearance | 3d | 2004-08-27 | 2004-08-31 |  | 5d |  |
| 18 | 1.5.3.1.4 | GST Agreement | 3d | 2004-08-27 | 2004-08-31 |  | 5d |  |
| 19 | 1.5.3.1.5 | Call Centre | 3d | 2004-08-27 | 2004-08-31 |  | 5d |  |
| 20 | 1.5.3.2 | Mutual Agreement | 5d | 2004-09-08 | 2004-09-14 | 14, 4 | 26d | 0d |
| 21 | 1.5.3.3 | Contract Signing | 4d | 2004-09-15 | 2004-09-20 | 20 | 26d |  |
| 22 | 1.6 | **Operation Set up** | 50d? | 2004-08-25 | 2004-11-02 |  | 10d |  |
| 23 | 1.6.1 | Warehouse Set up (Existing) | 1w | 2004-08-25 | 2004-08-31 |  | 62d |  |
| 24 | 1.6.2 | **Call Centre** | 15d | 2004-09-08 | 2004-09-28 | 4 | 15d |  |
| 25 | 1.6.2.1 | Office Setup | 15d | 2004-09-08 | 2004-09-28 |  | 20d |  |
| 26 | 1.6.2.2 | Telephone / FAX | 15d | 2004-09-08 | 2004-09-28 |  | 20d |  |
| 27 | 1.6.2.3 | Internet Connectivity | 15d | 2004-09-08 | 2004-09-28 |  | 20d |  |
| 28 | 1.6.2.4 | Hardware (PC) | 15d | 2004-09-08 | 2004-09-28 |  | 20d |  |

| ID | WBS | Task | Duration | Start | Finish | Predecessors | Total slack | Free slack |
| --- | --- | --- | --- | --- | --- | --- | --- | --- |
| 29 | 1.6.3 | **Human Resource** | 30d | 2004-09-08 | 2004-10-19 |  | 0d |  |
| 30 | 1.6.3.1 | **Recruitment** | 15d | 2004-09-08 | 2004-09-28 | 4 | 0d |  |
| 31 | 1.6.3.1.1 | Call Centre CSO | 15d | 2004-09-08 | 2004-09-28 |  | 0d |  |
| 32 | 1.6.3.1.2 | OM - Infocus | 15d | 2004-09-08 | 2004-09-28 |  | 0d |  |
| 33 | 1.6.3.1.3 | Customs Clearance | 15d | 2004-09-08 | 2004-09-28 |  | 0d |  |
| 34 | 1.6.3.1.4 | Transport coordinator | 15d | 2004-09-08 | 2004-09-28 |  | 0d |  |
| 35 | 1.6.3.2 | Training | 15d | 2004-09-29 | 2004-10-19 | 30 | 0d |  |
| 36 | 1.6.4 | **Transportation** | 30d | 2004-09-01 | 2004-10-12 |  | 5d |  |
| 37 | 1.6.4.1 | Carrier Selection | 10d | 2004-09-01 | 2004-09-14 | 14 | 10d | 0d |
| 38 | 1.6.4.2 | Engagement | 4w | 2004-09-15 | 2004-10-12 | 37 | 10d |  |
| 39 | 1.6.5 | **Process Finalization & Documentation** | 5d | 2004-09-08 | 2004-09-14 | 4 | 25d |  |
| 40 | 1.6.5.1 | Receiving | 2d | 2004-09-08 | 2004-09-09 |  | 33d |  |
| 41 | 1.6.5.2 | Inventory Transfers | 2d | 2004-09-08 | 2004-09-09 |  | 33d |  |
| 42 | 1.6.5.3 | Order Fulfillment | 2d | 2004-09-08 | 2004-09-09 |  | 33d |  |
| 43 | 1.6.5.4 | Returns & RMA | 5d | 2004-09-08 | 2004-09-14 |  | 30d |  |
| 44 | 1.6.5.5 | Back Order Management | 5d | 2004-09-08 | 2004-09-14 |  | 30d |  |
| 45 | 1.6.6 | **System Setup** | 50d? | 2004-08-25 | 2004-11-02 |  | 0d |  |
| 46 | 1.6.6.1 | **Infocus** | 35d? | 2004-08-25 | 2004-10-12 |  | 5d |  |
| 47 | 1.6.6.1.1 | Webstore | 6w | 2004-09-01 | 2004-10-12 | 2, 12 | 5d |  |
| 48 | 1.6.6.1.2 | Payment Gateway | 6w | 2004-08-27 | 2004-10-07 | 2 | 13d |  |
| 49 | 1.6.6.1.3 | Sub-Inventory Creation | 10d | 2004-08-27 | 2004-09-09 | 2 | 17d | 0d |
| 50 | 1.6.6.1.4 | Invoicing | 1d? | 2004-08-25 | 2004-08-25 |  | 44d |  |
| 51 | 1.6.6.1.5 | Order Fulfillment | 1d? | 2004-08-25 | 2004-08-25 |  | 44d |  |
| 52 | 1.6.6.1.6 | Message Modifications | 1d? | 2004-08-25 | 2004-08-25 |  | 44d |  |
| 53 | 1.6.6.1.7 | Internal Testing | 1d? | 2004-08-25 | 2004-08-25 |  | 44d |  |

| ID | WBS | Task | Duration | Start | Finish | Predecessors | Total slack | Free slack |
| --- | --- | --- | --- | --- | --- | --- | --- | --- |
| 54 | 1.6.6.2 | **BAX** | 16d | 2004-09-10 | 2004-10-01 |  | 12d |  |
| 55 | 1.6.6.2.1 | Inventory Bucket Creation / Mgmt | 5d | 2004-09-10 | 2004-09-16 | 4, 49 | 17d | 0d |
| 56 | 1.6.6.2.2 | Replenishment module | 5d | 2004-09-17 | 2004-09-23 | 55 | 17d | 0d |
| 57 | 1.6.6.2.3 | Invoice modifications | 2d | 2004-09-24 | 2004-09-27 | 56 | 17d | 0d |
| 58 | 1.6.6.2.4 | Inventory Transfer Modifications | 2d | 2004-09-28 | 2004-09-29 | 57 | 17d | 0d |
| 59 | 1.6.6.2.5 | Internal Testing | 2d | 2004-09-30 | 2004-10-01 | 58 | 17d |  |
| 60 | 1.6.6.3 | Integration Testing Training + UAT | 10d | 2004-10-20 | 2004-11-02 | 48, 36, 46, 54, 39, 29, 24, 13, 5 | 0d |  |
| 61 | 1.7 | Black Out Period | 5d | 2004-11-03 | 2004-11-09 | 60 | 0d |  |
| 62 | 1.8 | Go Live - BAX | 1d | 2004-11-10 | 2004-11-10 | 61 | 0d |  |
| 63 | 1.9 | Trial Launch | 5d | 2004-11-11 | 2004-11-17 | 62 | 0d |  |
| 64 | 1.10 | Infocus Official Launch | 1d | 2004-11-18 | 2004-11-18 | 63 | 0d |  |
